# Plano de DSOL Onda 3 versão 1.0

Schedule from MS Project, 2018-01-23 to 2018-02-23.
OI

## Calendars

- Padrão: Mon-Fri 09:00-12:00, 13:00-18:00; Sat-Sun off.

## Resources

| Resource |
| --- |
| Confirmar alocação FRED e Priscila |
| Priscila |
| Cezar |
| Kleyton |
| Frederico |
| Experian |
| Wedo |
| SOA |
| Credito |
| Integração SOA |
| Fred |
| Leandro |
| Antonio |
| Eduardo |

## Schedule

| ID | WBS | Task | Type | Duration | Start | Finish | Predecessors | Total slack | Resources | Work | Text1 | Text2 |
| --- | --- | --- | --- | --- | --- | --- | --- | --- | --- | --- | --- | --- |
| 1 | 1 | **DSOL Consolidado Onda 3** |  | 23d | 2018-01-24 | 2018-02-23 |  |  |  | 584h |  |  |
| 2 | 1.1 | **Elaboração DSOL RAID-FMS, TRANSACT e SOA** |  | 13d | 2018-01-24 | 2018-02-09 |  |  |  | 464h |  |  |
| 3 | 1.1.1 | Disponibilização de insumos de telas de crédito e operação | manual | 1d | 2018-01-23 | 2018-01-23 |  |  | Cezar; Kleyton | 16h | N/A |  |
| 4 | 1.1.2 | Plenária inicial de Alinhamento geral de solução | manual | 1d | 2018-01-24 | 2018-01-24 |  |  | Kleyton; Wedo; Experian; Credito | 32h | BH/VC |  |
| 5 | 1.1.3 | **Elaboração Documentação DFs RAID-FMS** |  | 12d | 2018-01-25 | 2018-02-09 | 4 |  | Confirmar alocação FRED e Priscila | 312h |  |  |
| 6 | 1.1.3.1 | Definição funcional de input de dados SOA->TRANSACT | manual | 2d | 2018-01-24 | 2018-01-25 |  |  | Integração SOA; Wedo; Fred; Kleyton; Experian | 80h | BH/VC | FRED |
| 7 | 1.1.3.2 | Definição de telas operação de credito e produtividade | manual | 3d | 2018-01-31 | 2018-02-02 | 4FS+2d |  | Priscila; Wedo; Kleyton | 72h | BH/VC |  |
| 8 | 1.1.3.3 | Definição de fluxo online de propostas derivadas Transact x RAID-FMS | manual | 2d | 2018-02-05 | 2018-02-06 | 4FS+7d |  | Frederico; Experian; Wedo; SOA | 64h | Polidoro | FRED |
| 9 | 1.1.4 | Elaboração Documentação DF´s TRANSACT | manual | 13d | 2018-01-24 | 2018-02-09 | 4SF |  | Confirmar alocação FRED e Priscila | 104h |  |  |
| 10 | 1.1.5 | Plenária de alinhamento integração SOA-Transact-FMS | manual | 2d | 2018-02-05 | 2018-02-06 | 4FS+10d |  |  |  | Ipanema/VC Floripa | Confirmar com integração |
| 11 | 1.1.6 | Elaboração de DF´s integração Transact-SOA-FMS | manual | 5d | 2018-02-05 | 2018-02-09 | 10FF |  |  |  |  | Confirmar com integração |
| 12 | 1.1.7 | Plenária final de Visão Geral da Solução | manual | 1d | 2018-02-09 | 2018-02-09 |  |  |  |  | AUDIO/VC |  |
| 13 | 1.2 | **Consolidação e Validação DSOL Onda 3** |  | 7d | 2018-02-15 | 2018-02-23 |  | 0d |  | 120h |  |  |
| 14 | 1.2.1 | Elaboração DSOL consolidado | manual | 5d | 2018-02-15 | 2018-02-21 | 12 |  | Leandro; Antonio; Eduardo | 120h |  |  |
| 15 | 1.2.2 | Plenária de validação DSOL Consolidado | manual | 1d | 2018-02-22 | 2018-02-22 | 14 |  |  |  | VC |  |
| 16 | 1.2.3 | Aprovação Documento Controlado CA | manual | 5d | 2018-02-19 | 2018-02-23 | 15 |  |  |  |  |  |
| 17 | 1.3 | Fim Plano DSOL | milestone, manual | 0d | 2018-02-23 | 2018-02-23 | 16FF |  |  |  |  |  |
